# Project_Sales_Plan

Schedule from MS Project, 2009-08-10 to 2009-10-10, status date 2009-08-23, 3 hours a day, A marks actual dates.
HOME

## Calendars

- MyCalendar: Mon-Sat 20:00-23:00; Sun 10:00-15:00. Exceptions (off unless hours are given): 2009-08-10 to 2009-08-15 20:00-23:00, 2009-08-16 10:30-15:00, 2009-08-17 to 2009-08-22 20:00-23:00, 2009-08-23 10:30-15:00, 2009-08-29 20:00-23:00, 2009-08-30 10:30-15:00, 2009-09-06 08:00-12:00, 13:00-17:00, 2009-09-13 08:00-12:00, 13:00-17:00.

## Resources

| Resource |
| --- |
| Cẩm |
| Minh |
| Hùng |
| Bảo |

## Schedule

| ID | WBS | Task | Duration | Start | Finish | Complete | Remaining | Total slack | Constraint | Resources | Work | Actual work |
| --- | --- | --- | --- | --- | --- | --- | --- | --- | --- | --- | --- | --- |
| 1 | 1 | **Phân tích và thiết kê** | 23d | 2009-08-10 A | 2009-08-31 | 79% | 4.82d | 45.83d |  | Minh; Cẩm | 533.4h | 484.55h |
| 2 | 1.1 | Phân tích UML | 12d | 2009-08-10 A | 2009-08-29 | 99% | 0.12d | 47.83d | finish no earlier than 2009-08-29 | Minh [106.7%] | 54.4h | 54.04h |
| 3 | 1.2 | Thiết kế database | 1d | 2009-08-30 | 2009-08-31 |  |  | 51.83d | finish no earlier than 2009-08-31 | Minh | 3h |  |
| 4 | 1.3 | **Thiết kế giao diện** | 17d | 2009-08-16 A | 2009-08-31 | 70% | 5.17d | 45.83d |  | Cẩm; Minh | 208h | 164.51h |
| 5 | 1.3.1 | Thiết kế các form nghiệp vụ | 10d | 2009-08-16 A | 2009-08-31 | 80% | 2d | 44.83d | finish no earlier than 2009-08-31 | Cẩm | 15h | 11.88h |
| 6 | 1.3.2 | Thiết kế form Main + Nghiên cứu các component | 7d | 2009-08-24 A | 2009-08-31 | 55% | 3.17d | 46.33d | finish no earlier than 2009-08-31 | Minh | 21h | 11.5h |
| 7 | 2 | **Coding** | 54.33d? | 2009-08-23 | 2009-10-09 |  |  | 1d |  |  | 365h |  |
| 8 | 2.1 | Xây dựng store produce | 6d | 2009-09-01 | 2009-09-06 |  |  | 44d | start no earlier than 2009-09-01 | Cẩm; Minh | 36h |  |
| 9 | 2.2 | Module Mua hàng | 10d | 2009-09-28 | 2009-10-09 |  |  | 0d | start no earlier than 2009-09-27 | Minh | 30h |  |
| 10 | 2.3 | Module Bán hàng | 10d | 2009-09-28 | 2009-10-09 |  |  | 0d | start no earlier than 2009-09-27 | Cẩm | 30h |  |
| 11 | 2.4 | **Module Công nợ** | 47.17d? | 2009-08-23 | 2009-10-03 |  |  | 8.17d |  | Minh; Hùng | 248h |  |
| 12 | 2.4.1 | Module quản lý kho | 1d? | 2009-08-23 | 2009-08-23 |  |  | 53.33d |  | Minh | 3h |  |
| 13 | 2.4.2 | Module quản lý tiền | 7d | 2009-09-27 | 2009-10-03 |  |  | 8.17d | start no earlier than 2009-09-27 | Hùng | 15h |  |
| 14 | 2.5 | Module Thiết lập hệ thồng | 7d | 2009-09-28 | 2009-10-06 |  |  | 3d | start no earlier than 2009-09-27 | Hùng | 21h |  |
| 15 | 3 | Triển khai và kiểm thử | 7d | 2009-10-01 | 2009-10-10 |  |  | 0d | finish no earlier than 2009-10-10 | Cẩm; Minh; Hùng | 63h |  |

Notes:
- 2: Lŕm trể so với dự kiến. Lý do đang nghięn cứu component vŕ resource
- 4: Ngày 6 là demo giao diện
- 5: -Khó khăn: + về co giản độ phân giải mŕn hěnh / -Cňn lại: Thiết lập hệ thống chưa lŕm-1 ngŕy.
- 7: chậm nhất lŕ thứ 2 Minh sẽ gởi template qui định tręn biến, tęn hŕm tręn C#, cách đặt tęn store, function. Bản giao diện
